# PROGRAMACION DIAGRAMA GANTT FINAL

Schedule from MS Project, 2022-02-19 to 2022-04-30, costs in S.

## Calendars

- Estándar: Mon-Sat 09:00-13:00, 15:00-19:00; Sun off.

## Schedule

| ID | WBS | Task | Type | Duration | Start | Finish | Predecessors | Total slack | Free slack | Cost | Text2 | Text1 |
| --- | --- | --- | --- | --- | --- | --- | --- | --- | --- | --- | --- | --- |
| 1 | 1 | **"MEJORAMIENTO DEL SERVICIO EDUCATIVO EN LA IEP N 54002 SANTA ROSA E IES SANTA ROSA DEL DISTRITO DE ABANCAY, PROVINCIA DE ABANCAY -** |  | 61d? | 2022-02-19 | 2022-04-30 |  | 0d |  | 1,344,242.69 | 71 días |  |
| 2 | 1.1 | Inicio de Obra | milestone | 0d | 2022-02-19 | 2022-02-19 |  | 61d |  |  | 0 días |  |
| 3 | 1.2 | **MAYORES METRADOS** |  | 61d? | 2022-02-19 | 2022-04-30 |  | 0d |  | 1,344,242.69 | 71 días |  |
| 4 | 1.2.1 | **OBRAS PROVISIONALES, TRABAJOS PRELIMINARES, SEGURIDAD Y SALUD** |  | 14d | 2022-02-19 | 2022-03-07 |  | 0d |  | 94,383.53 | 17 días | 01 |
| 5 | 1.2.1.1 | **SEGURIDAD Y SALUD** |  | 4d | 2022-02-19 | 2022-02-23 |  | 0d |  | 59,147.93 | 5 días | 01.01 |
| 6 | 1.2.1.1.1 | EQUIPOS DE PROTECCIÓN INDIVIDUAL |  | 4d | 2022-02-19 | 2022-02-23 |  | 0d |  | 42,348.16 | 5 días | 01.01.01 |
| 7 | 1.2.1.1.2 | SEÑALIZACIÓN TEMPORAL DE SEGURIDAD |  | 1d | 2022-02-19 | 2022-02-19 | 6SS | 0d |  | 7,236.32 | 1 día | 01.01.02 |
| 8 | 1.2.1.1.3 | EQUIPOS DE PROTECCIÓN COLECTIVA |  | 1d | 2022-02-19 | 2022-02-19 | 7SS | 60d |  | 9,563.45 | 1 día | 01.01.03 |
| 9 | 1.2.1.2 | **OBRAS PROVICIONALES** |  | 14d | 2022-02-19 | 2022-03-07 |  | 47d |  | 35,235.6 | 17 días | 01.02 |
| 10 | 1.2.1.2.1 | **TRASLADO INTERNO EN OBRA** |  | 14d | 2022-02-19 | 2022-03-07 |  | 47d |  | 35,235.6 | 17 días | 01.02.01 |
| 11 | 1.2.1.2.1.1 | TRASLADO DE MADERA DIST. MAX. 40M |  | 4d | 2022-02-21 | 2022-02-24 | 13SS | 56d |  | 495.6 | 4 días | 01.02.01.01 |
| 12 | 1.2.1.2.1.2 | TRASLADO DE AGRAGADOS CON CARRETILLA DIST. MAX 40M |  | 13d | 2022-02-21 | 2022-03-07 | 22SS | 47d | 0d | 18,240 | 15 días | 01.02.01.02 |
| 13 | 1.2.1.2.1.3 | TRASLADO DE CEMENTO DIST. MAX. 40M |  | 6d | 2022-02-21 | 2022-02-26 | 12SS | 54d | 0d | 8,100 | 6 días | 01.02.01.03 |
| 14 | 1.2.1.2.1.4 | TRASLADO DE LADRILLO DE PARET DIST. MAX. 40M |  | 6d | 2022-02-19 | 2022-02-25 | 13FS-7d | 55d |  | 8,400 | 7 días | 01.02.01.04 |
| 15 | 1.2.2 | **ESTRUCTURA** |  | 55d | 2022-02-21 | 2022-04-25 |  | 0d |  | 478,556.29 | 64 días | 02 |
| 16 | 1.2.2.1 | **MOVIMIENTO DE TIERRAS** |  | 26d | 2022-03-26 | 2022-04-25 |  | 5d |  | 31,197.26 | 31 días | 02.01 |
| 17 | 1.2.2.1.1 | RELLENO Y COMPACTADO CON MATERIAL DE PRESTAMO |  | 2d | 2022-03-26 | 2022-03-29 | 30SF | 5d | 0d | 7,296.2 | 4 días | 02.01.01 |
| 18 | 1.2.2.1.2 | ACARREO DE MATERIALES EXCEDENTE(D=40cm) |  | 17d | 2022-03-28 | 2022-04-15 | 17FS-1d | 5d | 0d | 11,833.75 | 19 días | 02.01.02 |
| 19 | 1.2.2.1.3 | ELIMINACION DE MATERIAL EXCEDENTE |  | 17d | 2022-04-06 | 2022-04-25 | 18FS-9d | 5d |  | 12,067.31 | 20 días | 02.01.03 |
| 20 | 1.2.2.2 | **CONCRETO SIMPLE** |  | 35d | 2022-02-21 | 2022-04-01 |  | 0d |  | 57,369.77 | 40 días | 02.02 |
| 21 | 1.2.2.2.1 | **SOLADOS** |  | 6d | 2022-02-21 | 2022-02-26 |  | 0d |  | 8,698.75 | 6 días | 02.02.01 |
| 22 | 1.2.2.2.1.1 | SOLADO f´c=80 Kg/cm2 E=10 CM |  | 6d | 2022-02-21 | 2022-02-26 | 7 | 0d |  | 8,698.75 | 6 días | 02.02.01.01 |
| 23 | 1.2.2.2.2 | **CIMIENTOS CORRIDOS** |  | 8d | 2022-03-17 | 2022-03-25 |  | 26d |  | 30,081.52 | 9 días | 02.02.02 |
| 24 | 1.2.2.2.2.1 | CIMIENTOS CORRIDOS CONCRETO f´c=140 Kg/cm2 + 30% P.G. |  | 2d | 2022-03-24 | 2022-03-25 | 25FS-1d | 26d | 0d | 12,194.74 | 2 días | 02.02.02.01 |
| 25 | 1.2.2.2.2.2 | ENCOFRADO Y DESENCOFRADO EN CIMIENTOS CORRIDO |  | 7d | 2022-03-17 | 2022-03-24 | 33 | 26d | 0d | 17,886.78 | 8 días | 02.02.02.02 |

| ID | WBS | Task | Duration | Start | Finish | Predecessors | Total slack | Free slack | Cost | Text1 | Text2 |
| --- | --- | --- | --- | --- | --- | --- | --- | --- | --- | --- | --- |
| 26 | 1.2.2.2.3 | **SOBRECIMIENTOS** | 5d | 2022-03-26 | 2022-03-31 |  | 26d |  | 4,450.65 | 02.02.03 | 6 días |
| 27 | 1.2.2.2.3.1 | SOBRECIMIENTO - CONCRETO f'c=175 Kg/cm2 + 25% P.M. | 1d | 2022-03-31 | 2022-03-31 | 28 | 26d |  | 1,472.3 | 02.02.03.01 | 1 día |
| 28 | 1.2.2.2.3.2 | ENCOFRADO Y DESENCOFRADO EN SOBRECIMIENTOS | 4d | 2022-03-26 | 2022-03-30 | 24 | 26d | 0d | 2,978.35 | 02.02.03.02 | 5 días |
| 29 | 1.2.2.2.4 | **FALSO PISO** | 4d | 2022-03-29 | 2022-04-01 |  | 0d |  | 14,138.85 | 02.02.04 | 4 días |
| 30 | 1.2.2.2.4.1 | FALSO PISO f'c=140 kf/cm2 (e= 10 cm) | 4d | 2022-03-29 | 2022-04-01 | 44 | 0d |  | 14,138.85 | 02.02.04.01 | 4 días |
| 31 | 1.2.2.3 | **OBRAS DE CONCRETO ARMADO** | 40d | 2022-02-28 | 2022-04-14 |  | 0d |  | 380,504.32 | 02.03 | 46 días |
| 32 | 1.2.2.3.1 | **ZAPATAS** | 15d | 2022-02-28 | 2022-03-16 |  | 0d |  | 38,809.49 | 02.03.01 | 17 días |
| 33 | 1.2.2.3.1.1 | ZAPATAS - CONCRETO PREMEZCLADO F´c=210 Kg/cm2 | 3d | 2022-03-14 | 2022-03-16 | 34 | 0d |  | 7,063.05 | 02.03.01.01 | 3 días |
| 34 | 1.2.2.3.1.2 | ZAPATAS - ENCOFRADO Y DESENCOFRADO | 10d | 2022-03-02 | 2022-03-12 | 35FS-3d | 0d |  | 16,864.64 | 02.03.01.02 | 11 días |
| 35 | 1.2.2.3.1.3 | ZAPATAS - ACERO f'y=4200 Kg/cm2 | 5d | 2022-02-28 | 2022-03-04 | 22 | 0d |  | 14,881.8 | 02.03.01.03 | 5 días |
| 36 | 1.2.2.3.2 | **MURO DE CONTENCION** | 19d | 2022-02-28 | 2022-03-21 |  | 32d |  | 201,145.87 | 02.03.02 | 22 días |
| 37 | 1.2.2.3.2.1 | MURO DE CONTENCIÓN - CONCRETO PREMEZCLADO F´c=210 Kg/cm2 | 3d | 2022-03-18 | 2022-03-21 | 38FS-1d | 32d | 0d | 68,546.3 | 02.03.02.01 | 4 días |
| 38 | 1.2.2.3.2.2 | MURO DE CONTENCIÓN - ENCOFRADO Y DESENCOFRADO | 12d | 2022-03-05 | 2022-03-18 | 39FS-6d | 32d | 0d | 42,246.13 | 02.03.02.02 | 14 días |
| 39 | 1.2.2.3.2.3 | MURO DE CONTENCIÓN - ACERO f'y=4200 Kg/cm2 | 11d | 2022-02-28 | 2022-03-11 | 22 | 32d | 0d | 90,353.44 | 02.03.02.03 | 12 días |
| 40 | 1.2.2.3.3 | **PLACAS** | 5d | 2022-03-17 | 2022-03-22 |  | 34d |  | 12,625 | 02.03.03 | 6 días |
| 41 | 1.2.2.3.3.1 | PLACAS - CONCRETO PREMEZCLADO F´c=210 Kg/cm2 | 1d | 2022-03-22 | 2022-03-22 | 42 | 34d |  | 3,727.57 | 02.03.03.01 | 1 día |
| 42 | 1.2.2.3.3.2 | PLACAS - ACERO f'y=4200 Kg/cm2 | 4d | 2022-03-17 | 2022-03-21 | 33 | 34d | 0d | 8,897.43 | 02.03.03.02 | 5 días |
| 43 | 1.2.2.3.4 | **COLUMNAS** | 10d | 2022-03-17 | 2022-03-28 |  | 0d |  | 22,492.59 | 02.03.04 | 12 días |
| 44 | 1.2.2.3.4.1 | COLUMNAS - CONCRETO PREMEZCLADO F´c=210 Kg/cm2 | 1d | 2022-03-28 | 2022-03-28 | 45 | 0d |  | 6,451.22 | 02.03.04.01 | 1 día |
| 45 | 1.2.2.3.4.2 | COLUMNAS - ENCOFRADO Y DESENCOFRADO | 6d | 2022-03-21 | 2022-03-26 | 46FS-2d | 0d |  | 7,965.12 | 02.03.04.02 | 6 días |
| 46 | 1.2.2.3.4.3 | COLUMNAS - ACERO f'y=4200 Kg/cm2 | 5d | 2022-03-17 | 2022-03-22 | 33 | 0d |  | 8,076.25 | 02.03.04.03 | 6 días |
| 47 | 1.2.2.3.5 | **VIGAS** | 1d | 2022-03-29 | 2022-03-29 |  | 28d |  | 894.33 | 02.03.05 | 1 día |
| 48 | 1.2.2.3.5.1 | VIGAS - CONCRETO PREMEZCLADO F´c=210 Kg/cm2 | 1d | 2022-03-29 | 2022-03-29 | 44 | 28d |  | 894.33 | 02.03.05.01 | 1 día |
| 49 | 1.2.2.3.6 | **COLUMNETAS** | 8d | 2022-03-17 | 2022-03-25 |  | 14d |  | 37,406.41 | 02.03.06 | 9 días |
| 50 | 1.2.2.3.6.1 | COLUMNETAS - CONCRETO f'c=175 Kg/cm2 | 2d | 2022-03-24 | 2022-03-25 | 51FS-1d | 14d | 0d | 10,804.89 | 02.03.06.01 | 2 días |
| 51 | 1.2.2.3.6.2 | COLUMNETAS - ENCOFRADO Y DESENCOFRADO | 5d | 2022-03-19 | 2022-03-24 | 52FS-2d | 14d | 0d | 10,144.05 | 02.03.06.02 | 6 días |
| 52 | 1.2.2.3.6.3 | COLUMNETAS - ACERO f'y=4200 Kg/cm2 | 4d | 2022-03-17 | 2022-03-21 | 46SS | 14d | 0d | 16,457.47 | 02.03.06.03 | 5 días |

| ID | WBS | Task | Duration | Start | Finish | Predecessors | Total slack | Free slack | Cost | Text1 | Text2 |
| --- | --- | --- | --- | --- | --- | --- | --- | --- | --- | --- | --- |
| 53 | 1.2.2.3.7 | **VIGUETAS** | 9d | 2022-03-26 | 2022-04-05 |  | 14d |  | 20,866.46 | 02.03.07 | 11 días |
| 54 | 1.2.2.3.7.1 | VIGUETAS - CONCRETO f'c=175 Kg/cm2 | 1d | 2022-04-05 | 2022-04-05 | 56 | 14d | 0d | 3,983.02 | 02.03.07.01 | 1 día |
| 55 | 1.2.2.3.7.2 | VIGUETAS - ENCOFRADO Y DESENCOFRADO | 6d | 2022-03-26 | 2022-04-01 | 50 | 14d | 0d | 8,447.19 | 02.03.07.02 | 7 días |
| 56 | 1.2.2.3.7.3 | VIGUETAS - ACERO f'y=4200 Kg/cm2 | 4d | 2022-03-31 | 2022-04-04 | 55FS-2d | 14d | 0d | 8,436.25 | 02.03.07.03 | 5 días |
| 57 | 1.2.2.3.8 | **TANQUE ELEVADO** | 8d | 2022-04-06 | 2022-04-14 |  | 14d |  | 9,962.3 | 02.03.08 | 9 días |
| 58 | 1.2.2.3.8.1 | **LOSA MACIZA DE FONDO - TANQUE ELEVADO e=25cm** | 6d | 2022-04-08 | 2022-04-14 |  | 14d |  | 6,246.69 | 02.03.08.01 | 7 días |
| 59 | 1.2.2.3.8.1.1 | LOSA MACIZA TANQUE ELEVADO - CONCRETO PREMEZCLADO F´c=210 Kg/cm2 CON IMPERMEABILIZANTE | 1d | 2022-04-14 | 2022-04-14 | 61 | 14d |  | 1,905.72 | 02.03.08.01.01 | 1 día |
| 60 | 1.2.2.3.8.1.2 | LOSA MACIZA TANQUE ELEVADO - ENCOFRADO Y DESENCOFRADO | 3d | 2022-04-08 | 2022-04-11 | 63 | 14d | 0d | 1,872.64 | 02.03.08.01.02 | 4 días |
| 61 | 1.2.2.3.8.1.3 | LOSA MACIZA TANQUE ELEVADO - ACERO f'y=4200 Kg/cm2 | 2d | 2022-04-12 | 2022-04-13 | 60 | 14d | 0d | 2,468.33 | 02.03.08.01.03 | 2 días |
| 62 | 1.2.2.3.8.2 | **MURO DE TANQUE ELEVADO E=25cm** | 2d | 2022-04-06 | 2022-04-07 |  | 14d |  | 3,715.61 | 02.03.08.02 | 2 días |
| 63 | 1.2.2.3.8.2.1 | MURO - CONCRETO PREMEZCLADO F´c=210 Kg/cm2 CON IMPERMEABILIZANTE | 1d | 2022-04-07 | 2022-04-07 | 64 | 14d | 0d | 1,896.42 | 02.03.08.02.01 | 1 día |
| 64 | 1.2.2.3.8.2.2 | MURO - ENCOFRADO Y DESENCOFRADO | 1d | 2022-04-06 | 2022-04-06 | 54 | 14d | 0d | 513.02 | 02.03.08.02.02 | 1 día |
| 65 | 1.2.2.3.8.2.3 | MURO - ACERO f'y=4200 Kg/cm2 | 1d | 2022-04-07 | 2022-04-07 | 64 | 20d |  | 1,306.17 | 02.03.08.02.03 | 1 día |
| 66 | 1.2.2.3.9 | **PAVIMENTO RIGIDO** | 3d | 2022-03-22 | 2022-03-24 |  | 32d |  | 36,301.87 | 02.03.09 | 3 días |
| 67 | 1.2.2.3.9.1 | PAVIMENTO RIGIDO 0.20M - CONCRETO PREMEZCLADO F´c=210 Kg/cm2 | 2d | 2022-03-22 | 2022-03-23 | 37 | 32d | 0d | 34,372.93 | 02.03.09.01 | 2 días |
| 68 | 1.2.2.3.9.2 | PAVIMENTO RIGIDO 0.20m - DOWELLS EN LOSAS RIGIDAS- JUNTA DE DILATACION, L=46CM | 1d | 2022-03-24 | 2022-03-24 | 67 | 32d |  | 1,928.94 | 02.03.09.02 | 1 día |
| 69 | 1.2.2.4 | **ESTRUCTURA METALICA** | 10d | 2022-04-02 | 2022-04-13 |  | 15d |  | 9,484.94 | 02.04 | 12 días |
| 70 | 1.2.2.4.1 | **PERGOLAS** | 10d | 2022-04-02 | 2022-04-13 |  | 15d |  | 9,484.94 | 02.04.01 | 12 días |
| 71 | 1.2.2.4.1.1 | ANCLAJE DE COLUMNAS CON PLANCHA METALICA e=12mm | 1d | 2022-04-02 | 2022-04-02 | 30 | 15d | 0d | 753.48 | 02.04.01.01 | 1 día |
| 72 | 1.2.2.4.1.2 | COLUMNAS METAALICAS CON TUBO LAC CUA. 150X150 e=4.5mm | 1d | 2022-04-04 | 2022-04-04 | 71 | 15d | 0d | 271.41 | 02.04.01.02 | 1 día |
| 73 | 1.2.2.4.1.3 | VIGAS METALICAS TRANSVERSALES CON TUBO LAC. RECT. 150X100 | 1d | 2022-04-05 | 2022-04-05 | 72 | 15d | 0d | 537.36 | 02.04.01.03 | 1 día |
| 74 | 1.2.2.4.1.4 | VIGAS METALICAS CURVADAS CON TUBO LAC. RECT. 150X100 | 1d | 2022-04-06 | 2022-04-06 | 73 | 15d | 0d | 1,927.2 | 02.04.01.04 | 1 día |
| 75 | 1.2.2.4.1.5 | CORREAS METALICAS CON TUBO LAC. RECT. 150X50 | 3d | 2022-04-07 | 2022-04-09 | 74 | 15d | 0d | 5,330.09 | 02.04.01.05 | 3 días |
| 76 | 1.2.2.4.1.6 | **INSTALACION Y MONTAJE** | 3d | 2022-04-11 | 2022-04-13 |  | 15d |  | 665.4 | 02.04.01.06 | 3 días |
| 77 | 1.2.2.4.1.6.1 | INSTALACION Y MONTAJE DE COLUMNAS, VIGAS Y CORREAS DE PERGOLAS | 3d | 2022-04-11 | 2022-04-13 | 75 | 15d |  | 665.4 | 02.04.01.06.01 | 3 días |

| ID | WBS | Task | Duration | Start | Finish | Predecessors | Total slack | Free slack | Cost | Text1 | Text2 |
| --- | --- | --- | --- | --- | --- | --- | --- | --- | --- | --- | --- |
| 78 | 1.2.3 | **ARQUITECTURA** | 60d | 2022-02-21 | 2022-04-30 |  | 0d |  | 437,474.36 | 03 | 69 días |
| 79 | 1.2.3.1 | **MUROS Y TABIQUES** | 14d | 2022-02-21 | 2022-03-08 |  | 10d |  | 44,534.05 | 03.01 | 16 días |
| 80 | 1.2.3.1.1 | MURO DE LADRILLO KK TIPO IV SOGA, M:1:4, E=1.5cm | 9d | 2022-02-21 | 2022-03-02 | 7 | 10d | 0d | 33,682.82 | 03.01.01 | 10 días |
| 81 | 1.2.3.1.2 | DIVISOR EN BAÑOS DE PLANCHA DE ACERO INOX. | 5d | 2022-03-03 | 2022-03-08 | 80 | 46d |  | 10,851.23 | 03.01.02 | 6 días |
| 82 | 1.2.3.2 | **REVOQUES ENLUCIDOS Y MOLDURAS** | 32d | 2022-03-03 | 2022-04-08 |  | 10d |  | 59,707.82 | 03.02 | 37 días |
| 83 | 1.2.3.2.1 | TARRAJEO PRIMARIO Y RAYADO | 8d | 2022-03-03 | 2022-03-11 | 80 | 10d | 0d | 8,158.35 | 03.02.01 | 9 días |
| 84 | 1.2.3.2.2 | TARRAJEO EN MURO INTERIORES MEZCLA 1:4 CEMENTO:ARENA | 8d | 2022-03-08 | 2022-03-16 | 83FS-4d | 10d | 0d | 8,459.65 | 03.02.02 | 9 días |
| 85 | 1.2.3.2.3 | TARRAJEO EN MURO EXTERIORES MEZCLA 1:4 CEMENTO:ARENA | 7d | 2022-03-14 | 2022-03-21 | 84FS-3d | 10d | 0d | 5,074.16 | 03.02.03 | 8 días |
| 86 | 1.2.3.2.4 | TARRAJEO DE SUPERFICIE DE COLUMNAS INCL. ARISTAS MEZCLA 1:4 CEMENTO:ARENA | 8d | 2022-03-22 | 2022-03-30 | 85 | 10d | 0d | 4,889.46 | 03.02.04 | 9 días |
| 87 | 1.2.3.2.5 | TARRAJEO DE SUPERF. VIGAS INCL. ARISTAS MEZCLA 1:4 CEMENTO:ARENA | 6d | 2022-03-29 | 2022-04-04 | 86FS-2d | 10d | 0d | 3,607.78 | 03.02.05 | 7 días |
| 88 | 1.2.3.2.6 | TARRAJEO EN TRIBUNA | 4d | 2022-03-22 | 2022-03-25 | 85 | 31d |  | 2,794.23 | 03.02.06 | 4 días |
| 89 | 1.2.3.2.7 | TARRAJEO EN FONDO DE ESCALERA CON MEZCLA C:A 1:4 E=1.5cm | 5d | 2022-03-22 | 2022-03-26 | 85 | 25d | 0d | 3,215.05 | 03.02.07 | 5 días |
| 90 | 1.2.3.2.8 | TARRAJEO EN CISTERNA CON IMPERMEABILIZANTE MEZCLA 1:5 CEMENTO:ARENA | 5d | 2022-03-28 | 2022-04-01 | 89 | 25d |  | 2,154.48 | 03.02.08 | 5 días |
| 91 | 1.2.3.2.9 | MESA DE CONCRETO CON ACABADO CERAMICO 30x30cm EN SS.HH. E=0.15cm | 2d | 2022-03-17 | 2022-03-18 | 84 | 19d | 0d | 1,131.95 | 03.02.09 | 2 días |
| 92 | 1.2.3.2.10 | VESTIDURA DE DERRAMES (1:5) | 12d | 2022-03-19 | 2022-04-01 | 91 | 19d | 0d | 9,105.96 | 03.02.10 | 14 días |
| 93 | 1.2.3.2.11 | BRUÑAS DE 1CM ENTRE MUROS Y ESTRUCTURAS | 12d | 2022-03-26 | 2022-04-08 | 92FS-6d | 19d |  | 11,116.75 | 03.02.11 | 14 días |
| 94 | 1.2.3.3 | **PISOS Y PAVIMENTOS** | 31d | 2022-03-26 | 2022-04-30 |  | 0d |  | 237,138.9 | 03.03 | 36 días |
| 95 | 1.2.3.3.1 | **CONTRAPISOS** | 8d | 2022-04-02 | 2022-04-11 |  | 0d |  | 71,645.31 | 03.03.01 | 10 días |
| 96 | 1.2.3.3.1.1 | CONTRAPISO DE 48mm. | 8d | 2022-04-02 | 2022-04-11 | 30 | 0d |  | 71,645.31 | 03.03.01.01 | 10 días |
| 97 | 1.2.3.3.2 | **PISOS** | 17d | 2022-04-12 | 2022-04-30 |  | 0d |  | 152,906.45 | 03.03.02 | 19 días |
| 98 | 1.2.3.3.2.1 | PISO DE CEMENTO PULIDO H=0.10m | 2d | 2022-04-12 | 2022-04-13 | 96 | 0d |  | 4,643.56 | 03.03.02.01 | 2 días |
| 99 | 1.2.3.3.2.2 | PISO TERRAZO PULIDO DE 25CM | 15d | 2022-04-14 | 2022-04-30 | 98 | 0d |  | 43,771.2 | 03.03.02.02 | 17 días |
| 100 | 1.2.3.3.2.3 | PISO PORCELANATO ANTIDESLIZANTE DE 60X60M | 15d | 2022-04-12 | 2022-04-28 | 96 | 2d | 0d | 56,199.97 | 03.03.02.03 | 17 días |
| 101 | 1.2.3.3.2.4 | VEREDAS DE CONCRETO f´c 175kG/CM2 INCL. ENCOFRADO | 2d | 2022-04-12 | 2022-04-13 | 96 | 0d |  | 12,371.38 | 03.03.02.04 | 2 días |
| 102 | 1.2.3.3.2.5 | BRUÑADO EN RAMPAS 1CM | 15d | 2022-04-14 | 2022-04-30 | 101 | 0d |  | 35,920.34 | 03.03.02.05 | 17 días |

| ID | WBS | Task | Duration | Start | Finish | Predecessors | Total slack | Free slack | Cost | Text1 | Text2 |
| --- | --- | --- | --- | --- | --- | --- | --- | --- | --- | --- | --- |
| 103 | 1.2.3.3.3 | **SARDINELES** | 9d | 2022-03-26 | 2022-04-05 |  | 22d |  | 12,587.14 | 03.03.03 | 11 días |
| 104 | 1.2.3.3.3.1 | SARDINEL REVESTIDA CON CERAMICO H=0.10m | 5d | 2022-03-26 | 2022-03-31 | 50 | 22d | 0d | 6,276.41 | 03.03.03.01 | 6 días |
| 105 | 1.2.3.3.3.2 | SARDINEL DE CONFINAMIENTO | 4d | 2022-04-01 | 2022-04-05 | 104 | 22d |  | 6,310.73 | 03.03.03.02 | 5 días |
| 106 | 1.2.3.4 | **ZOCALOS Y CONTRAZOCALOS** | 11d | 2022-03-17 | 2022-03-29 |  | 27d |  | 23,478.26 | 03.04 | 13 días |
| 107 | 1.2.3.4.1 | **ZOCALOS** | 6d | 2022-03-17 | 2022-03-23 |  | 27d |  | 17,040.38 | 03.04.01 | 7 días |
| 108 | 1.2.3.4.1.1 | ZOCALO DE PORCELANATO DE 60X60m H=1.20M | 6d | 2022-03-17 | 2022-03-23 | 84 | 27d | 0d | 17,040.38 | 03.04.01.01 | 7 días |
| 109 | 1.2.3.4.2 | **CONTRAZOCALOS** | 5d | 2022-03-24 | 2022-03-29 |  | 27d |  | 6,437.88 | 03.04.02 | 6 días |
| 110 | 1.2.3.4.2.1 | CONTRAZOCALO DE CEMENTO PULIDO C/MORTERO 1:5 DE 2CM, H=30CM | 5d | 2022-03-24 | 2022-03-29 | 108 | 27d | 13d | 6,437.88 | 03.04.02.01 | 6 días |
| 111 | 1.2.3.5 | **CARPINTERIA DE MADERA** | 5d | 2022-03-22 | 2022-03-26 |  | 16d |  | 8,191.93 | 03.05 | 5 días |
| 112 | 1.2.3.5.1 | PUERTA TABLERO REBAJADO AGUANO DOBLE HOJA C/SOBRE LUZ | 5d | 2022-03-22 | 2022-03-26 | 85 | 16d | 0d | 8,191.93 | 03.05.01 | 5 días |
| 113 | 1.2.3.6 | **CARPINTERIA METALICA** | 14d | 2022-03-28 | 2022-04-12 |  | 16d |  | 37,316.26 | 03.06 | 16 días |
| 114 | 1.2.3.6.1 | **CARPINTERIA DE FIERRO** | 2d | 2022-03-28 | 2022-03-29 |  | 16d |  | 1,175.04 | 03.06.01 | 2 días |
| 115 | 1.2.3.6.1.1 | PUERTA DE ACERO INOXIDABLE EN BAÑOS | 2d | 2022-03-28 | 2022-03-29 | 112 | 16d | 0d | 1,175.04 | 03.06.01.01 | 2 días |
| 116 | 1.2.3.6.2 | **CARPINTERIA DE ALUMINIO** | 3d | 2022-03-30 | 2022-04-01 |  | 16d |  | 1,995.48 | 03.06.02 | 3 días |
| 117 | 1.2.3.6.2.1 | MAMPARA DE ALUMINIO CON VIDRIO LAMINADO DE 10mm | 3d | 2022-03-30 | 2022-04-01 | 115 | 16d | 0d | 1,995.48 | 03.06.02.01 | 3 días |
| 118 | 1.2.3.6.3 | **BARANDAS Y PASAMANOS** | 9d | 2022-04-02 | 2022-04-12 |  | 16d |  | 34,145.74 | 03.06.03 | 11 días |
| 119 | 1.2.3.6.3.1 | BARANDA METALICA TIPO - 2 (VIDRIO TEMPLADO) | 2d | 2022-04-02 | 2022-04-04 | 117 | 16d | 0d | 2,658.16 | 03.06.03.01 | 3 días |
| 120 | 1.2.3.6.3.2 | BARANDA METALICA TIPO – 6 | 7d | 2022-04-05 | 2022-04-12 | 119 | 16d |  | 31,487.58 | 03.06.03.02 | 8 días |
| 121 | 1.2.3.7 | **CERRAJERIA** | 2d | 2022-03-28 | 2022-03-29 |  | 28d |  | 3,515.16 | 03.07 | 2 días |
| 122 | 1.2.3.7.1 | BISAGRA CAPUCHINA DE 4" | 1d | 2022-03-28 | 2022-03-28 | 112 | 28d | 0d | 2,155.68 | 03.07.01 | 1 día |
| 123 | 1.2.3.7.2 | BISAGRA GIRATORIA PARA PUERTA DE VIDRIO | 1d | 2022-03-29 | 2022-03-29 | 122 | 28d |  | 1,359.48 | 03.07.02 | 1 día |
| 124 | 1.2.3.8 | **PINTURAS** | 20d | 2022-03-28 | 2022-04-19 |  | 10d |  | 23,591.98 | 03.08 | 23 días |
| 125 | 1.2.3.8.1 | PINTURA CON ESMALTE EN ZOCALOS | 1d | 2022-04-14 | 2022-04-14 | 110, 129 | 14d |  | 374.94 | 03.08.01 | 1 día |
| 126 | 1.2.3.8.2 | PINTURA EN PUERTAS C/BARNIZ 2 MANO | 6d | 2022-03-28 | 2022-04-02 | 112 | 24d |  | 7,963.96 | 03.08.02 | 6 días |
| 127 | 1.2.3.8.3 | PINTURA CON ESMALTE EN TRIBUNAS | 2d | 2022-04-14 | 2022-04-15 | 129 | 13d |  | 1,711.53 | 03.08.03 | 2 días |
| 128 | 1.2.3.8.4 | PINTURA SATINADA EN CIELO RASO | 2d | 2022-04-15 | 2022-04-16 | 132 | 12d |  | 732.14 | 03.08.04 | 2 días |
| 129 | 1.2.3.8.5 | PINTURA SATINADA EN EXTERIORES | 4d | 2022-04-09 | 2022-04-13 | 131 | 10d | 0d | 2,448.43 | 03.08.05 | 5 días |
| 130 | 1.2.3.8.6 | PINTURA SATINADA EN COLUMNAS | 3d | 2022-04-09 | 2022-04-12 | 131 | 12d | 0d | 1,840.31 | 03.08.06 | 4 días |
| 131 | 1.2.3.8.7 | PINTURA SATINADA EN INTERIORES | 4d | 2022-04-05 | 2022-04-08 | 87 | 10d | 0d | 4,774.94 | 03.08.07 | 4 días |
| 132 | 1.2.3.8.8 | PINTURA SATINADA EN VIGAS | 2d | 2022-04-13 | 2022-04-14 | 130 | 12d | 0d | 1,134.12 | 03.08.08 | 2 días |
| 133 | 1.2.3.8.9 | PINTURA SATINADA EN PARAPETOS | 2d | 2022-04-14 | 2022-04-15 | 129 | 10d | 0d | 993.7 | 03.08.09 | 2 días |
| 134 | 1.2.3.8.10 | PINTURA SATINADA EN FONDO DE ESCALERA | 3d | 2022-04-16 | 2022-04-19 | 133 | 10d |  | 1,617.91 | 03.08.10 | 4 días |

| ID | WBS | Task | Duration | Start | Finish | Predecessors | Total slack | Free slack | Cost | Text1 | Text2 |
| --- | --- | --- | --- | --- | --- | --- | --- | --- | --- | --- | --- |
| 135 | 1.2.4 | **INSTALACIONES SANITARIAS** | 46d | 2022-03-03 | 2022-04-25 |  | 5d |  | 138,059.61 | 04 | 54 días |
| 136 | 1.2.4.1 | **APARATOS SANITARIOS Y ACCESORIOS** | 7d | 2022-04-18 | 2022-04-25 |  | 5d |  | 14,486.52 | 04.01 | 8 días |
| 137 | 1.2.4.1.1 | **SUMINISTRO DE APARATOS SANITARIOS** | 5d | 2022-04-18 | 2022-04-22 |  | 5d |  | 4,429.5 | 04.01.01 | 5 días |
| 138 | 1.2.4.1.1.1 | INODORO TANQUE BAJO DE CERÁMICA VITRIFICADA BLANCO | 5d | 2022-04-18 | 2022-04-22 | 100FS-10d | 5d | 0d | 3,819 | 04.01.01.01 | 5 días |
| 139 | 1.2.4.1.1.2 | LAVADERO DE ACERO INOXIDABLE 1 POZA CON 2 ESCURRIDORES | 1d | 2022-04-18 | 2022-04-18 | 138SS | 5d | 0d | 610.5 | 04.01.01.02 | 1 día |
| 140 | 1.2.4.1.2 | **SUMINISTRO DE ACCESORIOS SANITARIOS** | 4d | 2022-04-18 | 2022-04-21 |  | 5d | 0d | 8,609.54 | 04.01.02 | 4 días |
| 141 | 1.2.4.1.2.1 | LLAVE DE LAVATORIO TEMPORIZADA, CROMADA | 2d | 2022-04-18 | 2022-04-19 | 139SS | 5d | 0d | 3,073.5 | 04.01.02.01 | 2 días |
| 142 | 1.2.4.1.2.2 | SOPORTE PORTA PAPEL HIGIENICO CROMADO | 1d | 2022-04-18 | 2022-04-18 | 141SS | 5d | 0d | 1,026.63 | 04.01.02.02 | 1 día |
| 143 | 1.2.4.1.2.3 | TACHO DE ACERO INOXIDABLE DE 7L, CON TAPA Y SISTEMA PEDAL | 1d | 2022-04-19 | 2022-04-19 | 142 | 5d | 0d | 988.35 | 04.01.02.03 | 1 día |
| 144 | 1.2.4.1.2.4 | DOSIFICADOR DE JABON AUTOMATICO CROMADO-EMPOTRADO | 2d | 2022-04-19 | 2022-04-20 | 143SS | 5d | 0d | 2,130.7 | 04.01.02.04 | 2 días |
| 145 | 1.2.4.1.2.5 | BARRA DE SEGURIDAD DE ACERO INOXIDABLE, L = 0.90m | 1d | 2022-04-19 | 2022-04-19 | 144SS | 5d | 0d | 267.2 | 04.01.02.05 | 1 día |
| 146 | 1.2.4.1.2.6 | PORTA JABON CROMADO, ADOSADO | 1d | 2022-04-20 | 2022-04-20 | 145 | 5d | 0d | 43.88 | 04.01.02.06 | 1 día |
| 147 | 1.2.4.1.2.7 | ESPEJO BISELADO DE 0.45 x 0.75 m, e=4mm | 2d | 2022-04-20 | 2022-04-21 | 146SS | 5d |  | 1,079.28 | 04.01.02.07 | 2 días |
| 148 | 1.2.4.1.3 | **INSTALACION DE APARATOS SANITARIOS** | 3d | 2022-04-22 | 2022-04-25 |  | 5d |  | 980.56 | 04.01.03 | 4 días |
| 149 | 1.2.4.1.3.1 | INSTALACION DE APARATOS SANITARIOS | 3d | 2022-04-22 | 2022-04-25 | 140 | 5d | 0d | 980.56 | 04.01.03.01 | 4 días |
| 150 | 1.2.4.1.4 | **INSTALACION DE ACCESORIOS SANITARIOS** | 2d | 2022-04-22 | 2022-04-23 |  | 6d |  | 466.92 | 04.01.04 | 2 días |
| 151 | 1.2.4.1.4.1 | INSTALACION DE ACCESORIOS SANITARIOS | 2d | 2022-04-22 | 2022-04-23 | 149SS | 6d |  | 466.92 | 04.01.04.01 | 2 días |
| 152 | 1.2.4.2 | **SISTEMA DE AGUA FRIA** | 21d | 2022-03-03 | 2022-03-26 |  | 10d | 0d | 17,447.56 | 04.02 | 24 días |
| 153 | 1.2.4.2.1 | **SALIDA DE AGUA FRIA** | 4d | 2022-03-03 | 2022-03-07 |  | 10d | 0d | 4,329.9 | 04.02.01 | 5 días |
| 154 | 1.2.4.2.1.1 | SALIDA DE AGUA FRIA CON TUBERÍA DE PVC SAP C-10 Ø 1/2" | 4d | 2022-03-03 | 2022-03-07 | 80 | 10d | 0d | 4,329.9 | 04.02.01.01 | 5 días |
| 155 | 1.2.4.2.2 | **REDES DE DISTRIBUCIÓN** | 14d | 2022-03-08 | 2022-03-23 |  | 10d | 0d | 8,844.65 | 04.02.02 | 16 días |
| 156 | 1.2.4.2.2.1 | TUBERIA DE PVC C-10 Ø 1/2" SP | 3d | 2022-03-08 | 2022-03-10 | 154 | 10d | 0d | 2,309.09 | 04.02.02.01 | 3 días |
| 157 | 1.2.4.2.2.2 | TUBERIA DE PVC C-10 Ø 3/4" SP | 3d | 2022-03-11 | 2022-03-14 | 156 | 10d | 0d | 1,411.23 | 04.02.02.02 | 4 días |
| 158 | 1.2.4.2.2.3 | TUBERIA DE PVC C-10 Ø 1" SP | 2d | 2022-03-15 | 2022-03-16 | 157 | 10d | 0d | 1,835.9 | 04.02.02.03 | 2 días |
| 159 | 1.2.4.2.2.4 | TUBERIA DE PVC C-10 Ø 1 1/2" SP | 3d | 2022-03-17 | 2022-03-19 | 158 | 10d | 0d | 1,512.96 | 04.02.02.04 | 3 días |
| 160 | 1.2.4.2.2.5 | TUBERIA DE PVC C-10 Ø 2" SP | 3d | 2022-03-21 | 2022-03-23 | 159 | 10d |  | 1,775.47 | 04.02.02.05 | 3 días |

| ID | WBS | Task | Duration | Start | Finish | Predecessors | Total slack | Free slack | Cost | Text1 | Text2 |
| --- | --- | --- | --- | --- | --- | --- | --- | --- | --- | --- | --- |
| 161 | 1.2.4.2.3 | **ACCESORIOS DE REDES DE AGUA** | 2d | 2022-03-24 | 2022-03-25 | 155 | 10d | 0d | 3,649.09 | 04.02.03 | 2 días |
| 162 | 1.2.4.2.3.1 | CODO DE PVC Ø 1/2" x 90° SP | 2d | 2022-03-24 | 2022-03-25 |  | 10d |  | 1,781.82 | 04.02.03.01 | 2 días |
| 163 | 1.2.4.2.3.2 | CODO DE PVC Ø 3/4" x 90° SP | 1d | 2022-03-24 | 2022-03-24 |  | 11d |  | 345.03 | 04.02.03.02 | 1 día |
| 164 | 1.2.4.2.3.3 | CODO DE PVC Ø 1" x 90° SP | 2d | 2022-03-24 | 2022-03-25 |  | 10d |  | 602.82 | 04.02.03.03 | 2 días |
| 165 | 1.2.4.2.3.4 | CODO DE F°G° Ø 2" x 90° | 1d | 2022-03-24 | 2022-03-24 |  | 11d |  | 141.18 | 04.02.03.04 | 1 día |
| 166 | 1.2.4.2.3.5 | TEE DE PVC Ø 1/2" SP | 1d | 2022-03-24 | 2022-03-24 |  | 11d |  | 177.43 | 04.02.03.05 | 1 día |
| 167 | 1.2.4.2.3.6 | TEE DE PVC Ø 3/4" SP | 1d | 2022-03-24 | 2022-03-24 |  | 11d |  | 204.36 | 04.02.03.06 | 1 día |
| 168 | 1.2.4.2.3.7 | REDUCCION DE PVC Ø 3/4" A 1/2" SP | 1d | 2022-03-24 | 2022-03-24 |  | 11d |  | 284.94 | 04.02.03.07 | 1 día |
| 169 | 1.2.4.2.3.8 | REDUCCION DE PVC Ø 1" A 3/4" SP | 1d | 2022-03-24 | 2022-03-24 |  | 11d |  | 111.51 | 04.02.03.08 | 1 día |
| 170 | 1.2.4.2.4 | **VALVULAS** | 1d | 2022-03-26 | 2022-03-26 | 161 | 10d |  | 623.92 | 04.02.04 | 1 día |
| 171 | 1.2.4.2.4.1 | VALVULA COMPUERTA DE BRONCE Ø 1/2" | 1d | 2022-03-26 | 2022-03-26 |  | 10d |  | 382 | 04.02.04.01 | 1 día |
| 172 | 1.2.4.2.4.2 | VALVULA COMPUERTA DE BRONCE Ø 1" | 1d | 2022-03-26 | 2022-03-26 |  | 10d |  | 241.92 | 04.02.04.02 | 1 día |
| 173 | 1.2.4.3 | **SISTEMA DE DRENAJE PLUVIAL** | 20d | 2022-03-28 | 2022-04-19 | 152 | 10d |  | 57,812.14 | 04.03 | 23 días |
| 174 | 1.2.4.3.1 | **RED DE RAMALES COLECTORES** | 13d | 2022-03-28 | 2022-04-11 |  | 10d |  | 35,261.61 | 04.03.01 | 15 días |
| 175 | 1.2.4.3.1.1 | CANALETA METALICA DE EVACUACION DE AGUAS PLUVIALES | 1d | 2022-04-02 | 2022-04-02 | 176 | 10d | 0d | 558.72 | 04.03.01.01 | 1 día |
| 176 | 1.2.4.3.1.2 | CANAL DE CONCRETO EN TECHO CON IMPERMEABILIZANTE | 5d | 2022-03-28 | 2022-04-01 |  | 10d | 0d | 11,862.39 | 04.03.01.02 | 5 días |
| 177 | 1.2.4.3.1.3 | CANAL DE CONCRETO CON FIBRAS DE ACERO EN TECHO A=30cm, H=30cm, E=10cm | 4d | 2022-04-02 | 2022-04-06 | 176 | 21d |  | 7,881.84 | 04.03.01.03 | 5 días |
| 178 | 1.2.4.3.1.4 | MONTANTE DE TUB. PVC SAP C-10 Ø 3" ADOSADA | 4d | 2022-04-04 | 2022-04-07 | 175 | 10d | 0d | 9,651.72 | 04.03.01.04 | 4 días |
| 179 | 1.2.4.3.1.5 | COLUMNETAS DE CONCRETO f'c=175 Kg/cm2 PARA BAJANTES | 3d | 2022-04-08 | 2022-04-11 | 178 | 17d |  | 5,306.94 | 04.03.01.05 | 4 días |
| 180 | 1.2.4.3.2 | **RED DE RECOLECCIÓN** | 7d | 2022-04-08 | 2022-04-15 |  | 10d | 0d | 15,696.97 | 04.03.02 | 8 días |
| 181 | 1.2.4.3.2.1 | CANAL DE CONCRETO EN PISO A=30CM H=VARIABLE, E=15cm | 2d | 2022-04-08 | 2022-04-09 | 178 | 10d | 0d | 3,146.75 | 04.03.02.01 | 2 días |
| 182 | 1.2.4.3.2.2 | REJILLA METALICA TIPO III A=70cm | 3d | 2022-04-11 | 2022-04-13 | 181 | 10d | 0d | 9,826.41 | 04.03.02.02 | 3 días |
| 183 | 1.2.4.3.2.3 | RED COLECTORA TUBERÍA PVC UF Ø DE 12" INC/EXCAVACIÓN Y RELLENO | 2d | 2022-04-14 | 2022-04-15 | 182 | 10d |  | 2,723.81 | 04.03.02.03 | 2 días |
| 184 | 1.2.4.3.3 | **ACCESORIOS** | 3d | 2022-04-16 | 2022-04-19 | 180 | 10d |  | 6,853.56 | 04.03.03 | 4 días |
| 185 | 1.2.4.3.3.1 | SUMIDERO SIFONICO DE ACERO INOXIDABLE | 1d | 2022-04-16 | 2022-04-16 |  | 12d |  | 659.08 | 04.03.03.01 | 1 día |
| 186 | 1.2.4.3.3.2 | ABRAZADERA DE FIJACION DE MONTANTE TUBO DE 3" | 3d | 2022-04-16 | 2022-04-19 |  | 10d |  | 3,857.64 | 04.03.03.02 | 4 días |
| 187 | 1.2.4.3.3.3 | SOPORTE METALICO DE CANALETAS DE 15 cm | 2d | 2022-04-16 | 2022-04-18 |  | 11d |  | 2,336.84 | 04.03.03.03 | 3 días |

| ID | WBS | Task | Duration | Start | Finish | Predecessors | Total slack | Free slack | Cost | Text1 | Text2 |
| --- | --- | --- | --- | --- | --- | --- | --- | --- | --- | --- | --- |
| 188 | 1.2.4.4 | **SISTEMA DE DESAGUE Y VENTILACION** | 22d | 2022-03-08 | 2022-04-01 | 153 | 25d |  | 48,313.39 | 04.04 | 25 días |
| 189 | 1.2.4.4.1 | **SALIDA DE DESAGUE** | 17d | 2022-03-08 | 2022-03-26 |  | 25d |  | 10,303.78 | 04.04.01 | 19 días |
| 190 | 1.2.4.4.1.1 | SALIDA DE DESAGUE Ø 2" | 4d | 2022-03-08 | 2022-03-11 |  | 25d | 0d | 3,172.85 | 04.04.01.01 | 4 días |
| 191 | 1.2.4.4.1.2 | SALIDA DE DESAGUE Ø 3" | 3d | 2022-03-12 | 2022-03-15 | 190 | 25d | 0d | 997.56 | 04.04.01.02 | 4 días |
| 192 | 1.2.4.4.1.3 | SALIDA DE DESAGUE Ø 4" | 5d | 2022-03-16 | 2022-03-21 | 191 | 30d | 0d | 4,011.17 | 04.04.01.03 | 6 días |
| 193 | 1.2.4.4.1.4 | SALIDA DE VENTILACIÓN Ø 2" | 5d | 2022-03-22 | 2022-03-26 | 192 | 30d |  | 2,122.2 | 04.04.01.04 | 5 días |
| 194 | 1.2.4.4.2 | **REDES DE DERIVACIÓN** | 5d | 2022-03-16 | 2022-03-21 | 191 | 25d | 0d | 2,107.08 | 04.04.02 | 6 días |
| 195 | 1.2.4.4.2.1 | TUBERIA PVC SAL Ø 3" | 1d | 2022-03-16 | 2022-03-16 |  | 25d | 0d | 227.85 | 04.04.02.01 | 1 día |
| 196 | 1.2.4.4.2.2 | TUBERIA PVC SAL Ø 4" | 3d | 2022-03-17 | 2022-03-19 | 195 | 25d | 0d | 1,768.91 | 04.04.02.02 | 3 días |
| 197 | 1.2.4.4.2.3 | TUBERIA DE VENTILACIÓN PVC SAL Ø 2" | 1d | 2022-03-21 | 2022-03-21 | 196 | 25d |  | 110.32 | 04.04.02.03 | 1 día |
| 198 | 1.2.4.4.3 | **REDES COLECTORAS** | 8d | 2022-03-22 | 2022-03-30 | 194 | 25d | 0d | 24,232.09 | 04.04.03 | 9 días |
| 199 | 1.2.4.4.3.1 | TUBERÍA PVC UF Ø DE 6" | 2d | 2022-03-22 | 2022-03-23 |  | 25d | 0d | 1,375.26 | 04.04.03.01 | 2 días |
| 200 | 1.2.4.4.3.2 | RED DE EMPLAME TUBERÍA PVC UF Ø DE 6" EXTERIORES CON REPOSIION DE VEREDAS | 6d | 2022-03-24 | 2022-03-30 | 199 | 25d |  | 22,856.83 | 04.04.03.02 | 7 días |
| 201 | 1.2.4.4.4 | **ACCESORIOS DE REDES DE DESAGUE** | 2d | 2022-03-22 | 2022-03-23 | 194 | 33d |  | 4,219.81 | 04.04.04 | 2 días |
| 202 | 1.2.4.4.4.1 | CODO DE PVC SAL Ø 2" x 45° | 1d | 2022-03-22 | 2022-03-22 |  | 34d |  | 338.78 | 04.04.04.01 | 1 día |
| 203 | 1.2.4.4.4.2 | YEE DE PVC Ø 2" | 2d | 2022-03-22 | 2022-03-23 |  | 33d |  | 503.28 | 04.04.04.02 | 2 días |
| 204 | 1.2.4.4.4.3 | YEE CON REDUCCIÓN DE PVC Ø 3" A 2" | 1d | 2022-03-22 | 2022-03-22 |  | 34d |  | 29.36 | 04.04.04.03 | 1 día |
| 205 | 1.2.4.4.4.4 | YEE CON REDUCCIÓN DE PVC Ø 4" A 3" | 1d | 2022-03-22 | 2022-03-22 |  | 34d |  | 205.56 | 04.04.04.04 | 1 día |
| 206 | 1.2.4.4.4.5 | REDUCCIÓN DE PVC Ø 3" A 2" | 1d | 2022-03-22 | 2022-03-22 |  | 34d |  | 381.64 | 04.04.04.05 | 1 día |
| 207 | 1.2.4.4.4.6 | REDUCCIÓN DE PVC Ø 4" A 2" | 1d | 2022-03-22 | 2022-03-22 |  | 34d |  | 423.9 | 04.04.04.06 | 1 día |
| 208 | 1.2.4.4.4.7 | SUMIDEROS Ø 3" | 2d | 2022-03-22 | 2022-03-23 |  | 33d |  | 1,546 | 04.04.04.07 | 2 días |
| 209 | 1.2.4.4.4.8 | REGISTRO ROSCADO Ø 4" | 2d | 2022-03-22 | 2022-03-23 |  | 33d |  | 649.99 | 04.04.04.08 | 2 días |
| 210 | 1.2.4.4.4.9 | SOMBRERO DE VENTILACIÓN DE Ø 2" | 1d | 2022-03-22 | 2022-03-22 |  | 34d |  | 141.3 | 04.04.04.09 | 1 día |
| 211 | 1.2.4.4.5 | **CAMARAS DE INSPECCIÓN** | 2d | 2022-03-31 | 2022-04-01 | 198 | 25d |  | 7,450.63 | 04.04.05 | 2 días |
| 212 | 1.2.4.4.5.1 | BUZONETAS DE D=0.60M E=0.15M H=VARIABLE | 2d | 2022-03-31 | 2022-04-01 |  | 25d |  | 2,358.36 | 04.04.05.01 | 2 días |
| 213 | 1.2.4.4.5.2 | BUZON TIPO I DE D=1.20M E=0.15M H=1.20 | 2d | 2022-03-31 | 2022-04-01 |  | 25d |  | 2,047.98 | 04.04.05.02 | 2 días |
| 214 | 1.2.4.4.5.3 | BUZON TIPO II DE D=1.20M E=0.15M H>3.00M | 1d | 2022-03-31 | 2022-03-31 |  | 26d |  | 3,044.29 | 04.04.05.03 | 1 día |

| ID | WBS | Task | Duration | Start | Finish | Predecessors | Total slack | Free slack | Constraint | Cost | Text1 | Text2 |
| --- | --- | --- | --- | --- | --- | --- | --- | --- | --- | --- | --- | --- |
| 215 | 1.2.5 | **INSTALACIONES ELECTRICAS** | 48d? | 2022-03-03 | 2022-04-27 |  |  |  |  | 195,768.9 | 05 | 56 días |
| 216 | 1.2.5.1 | **INSTALACION DE POZO A TIERRA** | 14d | 2022-03-03 | 2022-03-18 |  | 10d |  |  | 16,452.15 | 05.01 | 16 días |
| 217 | 1.2.5.1.1 | POZO A TIERRA | 9d | 2022-03-03 | 2022-03-12 | 80 | 10d | 0d |  | 14,716.46 | 05.01.01 | 10 días |
| 218 | 1.2.5.1.2 | CAJA DE REGISTRO PARA POZO A TIERRA CON TAPA DE C°( SEGÚN DISEÑO) | 5d | 2022-03-14 | 2022-03-18 | 217 | 10d | 0d |  | 1,735.69 | 05.01.02 | 5 días |
| 219 | 1.2.5.2 | **ALIMENTADORES** | 16d | 2022-03-14 | 2022-03-31 |  | 26d |  |  | 25,721.79 | 05.02 | 18 días |
| 220 | 1.2.5.2.1 | **INTERRUPTORES TERMOMAGNETICOS** | 16d | 2022-03-14 | 2022-03-31 |  | 26d |  |  | 11,473.41 | 05.02.01 | 18 días |
| 221 | 1.2.5.2.1.1 | INTERRUPTOR TERMOMAGNETICO DE 3x50 A, 220V | 1d | 2022-03-14 | 2022-03-14 | 217 | 26d | 0d |  | 91.68 | 05.02.01.01 | 1 día |
| 222 | 1.2.5.2.1.2 | INTERRUPTOR TERMOMAGNETICO DE 3x30 A, 220V | 2d | 2022-03-15 | 2022-03-16 | 221 | 26d | 0d |  | 1,833.6 | 05.02.01.02 | 2 días |
| 223 | 1.2.5.2.1.3 | INTERRUPTOR TERMOMAGNETICO DE 2x30 A, 220V | 2d | 2022-03-17 | 2022-03-18 | 222 | 26d | 0d |  | 881.79 | 05.02.01.03 | 2 días |
| 224 | 1.2.5.2.1.4 | INTERRUPTOR TERMOMAGNETICO DE 2x20 A, 220V | 1d | 2022-03-19 | 2022-03-19 | 223 | 26d | 0d |  | 545.87 | 05.02.01.04 | 1 día |
| 225 | 1.2.5.2.1.5 | INTERRUPTOR TERMOMAGNETICO DE 2x15 A, 220V | 3d | 2022-03-21 | 2022-03-23 | 224 | 26d | 0d |  | 1,049.75 | 05.02.01.05 | 3 días |
| 226 | 1.2.5.2.1.6 | INTERRUPTOR TERMOMAGNETICO DE 3X60 A, 220V | 2d | 2022-03-24 | 2022-03-25 | 225 | 26d | 0d | start no earlier than 2022-03-23 | 366.72 | 05.02.01.06 | 2 días |
| 227 | 1.2.5.2.1.7 | INTERRUPTOR TERMOMAGNETICO DE 3X40 A, 220V | 2d | 2022-03-26 | 2022-03-28 | 226 | 26d | 0d |  | 91 | 05.02.01.07 | 3 días |
| 228 | 1.2.5.2.1.8 | INTERRUPTOR TERMOMAGNETICO DIFERENCIAL DE 2x25 A, 220V | 3d | 2022-03-29 | 2022-03-31 | 225, 227 | 26d |  |  | 6,613 | 05.02.01.08 | 3 días |
| 229 | 1.2.5.2.2 | **DUCTOS Y TUBERIAS** | 5d | 2022-03-14 | 2022-03-18 |  | 35d |  |  | 11,231.85 | 05.02.02 | 5 días |
| 230 | 1.2.5.2.2.1 | TUBERIA PVC SAP-P Ø 25mm | 5d | 2022-03-14 | 2022-03-18 | 217 | 35d | 0d |  | 9,399.95 | 05.02.02.01 | 5 días |
| 231 | 1.2.5.2.2.2 | CURVAS PVC SAP-P Ø 25mm | 3d | 2022-03-14 | 2022-03-16 | 230SS | 39d |  |  | 881.6 | 05.02.02.02 | 3 días |
| 232 | 1.2.5.2.2.3 | UNIÓNes PVC SAP-P Ø 25mm | 3d | 2022-03-14 | 2022-03-16 | 230SS | 39d |  |  | 950.3 | 05.02.02.03 | 3 días |
| 233 | 1.2.5.2.3 | **CONDUCTORES Y CABLES** | 2d | 2022-03-19 | 2022-03-21 |  | 35d |  |  | 3,016.53 | 05.02.03 | 3 días |
| 234 | 1.2.5.2.3.1 | TENDIDO DE CABLE N2XOH DE 6mm² | 2d | 2022-03-19 | 2022-03-21 | 230 | 35d |  |  | 3,016.53 | 05.02.03.01 | 3 días |
| 235 | 1.2.5.3 | **ALUMBRADO** | 42d | 2022-03-03 | 2022-04-20 |  |  |  |  | 149,478.12 | 05.03 | 49 días |
| 236 | 1.2.5.3.1 | **DUCTOS Y TUBERIAS** | 8d | 2022-03-19 | 2022-03-28 |  | 10d |  |  | 21,974.35 | 05.03.01 | 10 días |
| 237 | 1.2.5.3.1.1 | TUBERIA CONDUIT METALICA EMT Ø 19 mm | 2d | 2022-03-19 | 2022-03-21 | 218 | 10d | 0d |  | 8,113.9 | 05.03.01.01 | 3 días |
| 238 | 1.2.5.3.1.2 | TUBERIA PVC SAP-P Ø 19mm | 5d | 2022-03-22 | 2022-03-26 | 237 | 15d | 0d |  | 9,929.96 | 05.03.01.02 | 5 días |
| 239 | 1.2.5.3.1.3 | CURVAS PVC SAP-P Ø 19mm | 6d | 2022-03-22 | 2022-03-28 | 238SS | 29d |  |  | 3,930.49 | 05.03.01.03 | 7 días |

| ID | WBS | Task | Type | Duration | Start | Finish | Predecessors | Total slack | Free slack | Cost | Text1 | Text2 |
| --- | --- | --- | --- | --- | --- | --- | --- | --- | --- | --- | --- | --- |
| 240 | 1.2.5.3.2 | **CONDUCTORES Y CABLES** |  | 13d | 2022-03-22 | 2022-04-05 |  | 10d |  | 71,728.49 | 05.03.02 | 15 días |
| 241 | 1.2.5.3.2.1 | TENDIDO DE CABLE LSOHX-90 DE 2.5mm² |  | 13d | 2022-03-22 | 2022-04-05 | 237 | 10d | 0d | 71,728.49 | 05.03.02.01 | 15 días |
| 242 | 1.2.5.3.3 | **SALIDA PARA CENTROS DE LUZ** |  | 20d | 2022-03-28 | 2022-04-19 |  | 10d |  | 40,778.02 | 05.03.03 | 23 días |
| 243 | 1.2.5.3.3.1 | SALIDA PARA CENTRO DE LUZ |  | 12d | 2022-04-06 | 2022-04-19 | 241 | 10d |  | 36,693.22 | 05.03.03.01 | 14 días |
| 244 | 1.2.5.3.3.2 | CAJA RECTANGULAR DE F°G° DE 100X55X40mm |  | 10d | 2022-03-28 | 2022-04-07 | 238 | 15d | 0d | 4,084.8 | 05.03.03.02 | 11 días |
| 245 | 1.2.5.3.4 | **INTERRUPTORES** |  | 4d | 2022-03-03 | 2022-03-07 |  | 47d |  | 7,610.9 | 05.03.04 | 5 días |
| 246 | 1.2.5.3.4.1 | SALIDA PARA INTERRUPTOR DOBLE, INCLUYE INSTALACION DE INTERRUPTOR |  | 4d | 2022-03-03 | 2022-03-07 |  | 47d |  | 7,610.9 | 05.03.04.01 | 5 días |
| 247 | 1.2.5.3.5 | **CAJAS METALICAS CON TAPA** |  | 5d | 2022-04-08 | 2022-04-13 |  | 15d |  | 3,312 | 05.03.05 | 6 días |
| 248 | 1.2.5.3.5.1 | INSTALACION DE CAJA DE PASO TIPO 1 DE 100x100x75 mm |  | 5d | 2022-04-08 | 2022-04-13 | 244 | 15d |  | 3,312 | 05.03.05.01 | 6 días |
| 249 | 1.2.5.3.6 | **SUMINISTRO E INSTALACION DE POSTES** |  | 1d | 2022-03-14 | 2022-03-14 |  | 33d |  | 2,255.96 | 05.03.06 | 1 día |
| 250 | 1.2.5.3.6.1 | POSTE METALICO F°G° TUBULAR DE 6m DE 102 mm de Ø |  | 1d | 2022-03-14 | 2022-03-14 | 217 | 33d | 0d | 1,127.98 | 05.03.06.01 | 1 día |
| 251 | 1.2.5.3.6.2 | APERTURA DE HOYO, IZAJE Y CIMENTACION DE POSTE DE F°G° 6.00mts |  | 1d | 2022-03-14 | 2022-03-14 | 250SS | 41d |  | 1,127.98 | 05.03.06.02 | 1 día |
| 252 | 1.2.5.3.7 | **SALIDA PARA REFLECTORES** |  | 3d | 2022-03-15 | 2022-03-17 |  | 33d |  | 1,818.4 | 05.03.07 | 3 días |
| 253 | 1.2.5.3.7.1 | SALIDA PARA CENTRO DE FAROLA EN POSTE |  | 3d | 2022-03-15 | 2022-03-17 | 250 | 33d | 0d | 1,818.4 | 05.03.07.01 | 3 días |
| 254 | 1.2.5.4 | **TOMACORRIENTES Y ARTEFACTOS DE EMERGENCIA** |  | 5d | 2022-03-18 | 2022-03-23 |  | 33d |  | 4,116.84 | 05.04 | 6 días |
| 255 | 1.2.5.4.1 | **CONDUCTORES Y CABLES** |  | 5d | 2022-03-18 | 2022-03-23 |  | 33d |  | 4,116.84 | 05.04.01 | 6 días |
| 256 | 1.2.5.4.1.1 | TENDIDO DE CABLE LSOHX-90 DE 4mm² |  | 5d | 2022-03-18 | 2022-03-23 | 253 | 33d |  | 4,116.84 | 05.04.01.01 | 6 días |
| 257 | 1.3 | Termino de Obra | milestone | 0d | 2022-02-19 | 2022-02-19 |  | 61d |  |  |  | 0 días |
